# RideSharing Project

Schedule from Planner, 2015-02-13 to 2015-05-15.
Enclave

## Calendars

- Default: Mon-Fri 08:00-12:00, 13:00-17:00; Sat-Sun off. Exceptions (off unless hours are given): 2015-02-18 to 2015-02-20, 2015-02-23 to 2015-02-24.

## Resources

| Resource | Group |
| --- | --- |
| Vi (Vidal) T. LE | Dev |
| Cuong (Cody) N. NGUYEN | Dev |
| Huy (Harold) Q. BUI | Dev |
| Trung (Truman) Q. NGUYEN | Dev |
| Thanh (Terry) D. TRAN | TL |
| Hoang (Hanley) T.T. NGUYEN | PM |

## Schedule

| ID | WBS | Task | Duration | Start | Finish | Predecessors | Complete | Resources | Work |
| --- | --- | --- | --- | --- | --- | --- | --- | --- | --- |
| 1 | 1 | **Initiation** |  | 2015-02-13 | 2015-02-25 |  |  |  | 56h |
| 2 | 1.1 | Project kick-off & introduction | 1d | 2015-02-13 | 2015-02-13 |  | 100% | Vi (Vidal) T. LE [17%]; Cuong (Cody) N. NGUYEN [17%]; Huy (Harold) Q. BUI [17%]; Trung (Truman) Q. NGUYEN [17%]; Thanh (Terry) D. TRAN [17%]; Hoang (Hanley) T.T. NGUYEN [17%] | 8h |
| 3 | 1.2 | Preparation & Study overview requirements | 3d | 2015-02-16 | 2015-02-25 | 2 | 100% | Vi (Vidal) T. LE [17%]; Cuong (Cody) N. NGUYEN [17%]; Huy (Harold) Q. BUI [17%]; Trung (Truman) Q. NGUYEN [17%]; Thanh (Terry) D. TRAN [17%]; Hoang (Hanley) T.T. NGUYEN [17%] | 24h |
| 4 | 1.3 | Requirement brainstorming | 3d | 2015-02-16 | 2015-02-25 | 2 | 100% | Vi (Vidal) T. LE [17%]; Cuong (Cody) N. NGUYEN [17%]; Huy (Harold) Q. BUI [17%]; Trung (Truman) Q. NGUYEN [17%]; Thanh (Terry) D. TRAN [17%]; Hoang (Hanley) T.T. NGUYEN [17%] | 24h |
| 5 | 2 | **Definition & Solution** |  | 2015-02-26 | 2015-03-02 | 1 |  |  | 24h |
| 6 | 2.1 | Study overview designs | 1d | 2015-02-26 | 2015-02-26 |  | 100% | Vi (Vidal) T. LE [17%]; Cuong (Cody) N. NGUYEN [17%]; Huy (Harold) Q. BUI [17%]; Trung (Truman) Q. NGUYEN [17%]; Thanh (Terry) D. TRAN [17%]; Hoang (Hanley) T.T. NGUYEN [17%] | 8h |
| 7 | 2.2 | Brainstorming: design & conventions | 1d | 2015-02-27 | 2015-02-27 | 6 | 100% | Vi (Vidal) T. LE [17%]; Cuong (Cody) N. NGUYEN [17%]; Huy (Harold) Q. BUI [17%]; Trung (Truman) Q. NGUYEN [17%]; Thanh (Terry) D. TRAN [17%]; Hoang (Hanley) T.T. NGUYEN [17%] | 8h |
| 8 | 2.3 | Integrate Database | 1d | 2015-03-02 | 2015-03-02 | 7 |  | Vi (Vidal) T. LE [17%]; Cuong (Cody) N. NGUYEN [17%]; Huy (Harold) Q. BUI [17%]; Trung (Truman) Q. NGUYEN [17%]; Thanh (Terry) D. TRAN [17%]; Hoang (Hanley) T.T. NGUYEN [17%] | 8h |
| 9 | 3 | **Construction** |  | 2015-03-03 | 2015-05-07 | 5 |  |  | 4552h |
| 10 | 3.1 | **Iteration 1 - Common, Programme, Geography1** |  | 2015-03-03 | 2015-03-16 |  |  |  | 1224h |
| 11 | 3.1.1 | **Login** |  | 2015-03-03 | 2015-03-16 |  |  |  | 144h |
| 12 | 3.1.1.1 | Study requirement |  | 2015-03-03 | 2015-03-03 |  |  | Huy (Harold) Q. BUI | 8h |
| 13 | 3.1.1.2 | Prepare GUI prototypes |  | 2015-03-04 | 2015-03-04 | 12 |  | Huy (Harold) Q. BUI | 8h |
| 14 | 3.1.1.3 | Study design & prepare pseudo codes |  | 2015-03-05 | 2015-03-05 | 13 |  | Huy (Harold) Q. BUI | 8h |
| 15 | 3.1.1.4 | Prepare UT case document |  | 2015-03-05 | 2015-03-05 | 13 |  | Huy (Harold) Q. BUI | 8h |
| 16 | 3.1.1.5 | Code for Web |  | 2015-03-06 | 2015-03-10 | 15 |  | Hoang (Hanley) T.T. NGUYEN | 24h |
| 17 | 3.1.1.6 | Code for WP |  | 2015-03-06 | 2015-03-10 | 15 |  | Trung (Truman) Q. NGUYEN | 24h |
| 18 | 3.1.1.7 | Code for Android |  | 2015-03-06 | 2015-03-10 | 15 |  | Huy (Harold) Q. BUI | 24h |
| 19 | 3.1.1.8 | Self code review & Fix bugs |  | 2015-03-11 | 2015-03-11 | 18 |  | Huy (Harold) Q. BUI | 8h |
| 20 | 3.1.1.9 | Peer code review & Fix bugs |  | 2015-03-11 | 2015-03-11 | 18 |  | Huy (Harold) Q. BUI | 8h |
| 21 | 3.1.1.10 | Update UT case document |  | 2015-03-12 | 2015-03-12 | 20 |  | Huy (Harold) Q. BUI | 8h |
| 22 | 3.1.1.11 | Prepare UT scripts |  | 2015-03-13 | 2015-03-13 | 21 |  | Huy (Harold) Q. BUI | 8h |
| 23 | 3.1.1.12 | Perform UT & Fix bugs |  | 2015-03-16 | 2015-03-16 | 22 |  | Huy (Harold) Q. BUI | 8h |
| 24 | 3.1.2 | **Logout** |  | 2015-03-03 | 2015-03-16 |  |  |  | 144h |
| 25 | 3.1.2.1 | Study requirement |  | 2015-03-03 | 2015-03-03 |  |  | Hoang (Hanley) T.T. NGUYEN | 8h |
| 26 | 3.1.2.2 | Prepare GUI prototypes |  | 2015-03-04 | 2015-03-04 | 25 |  | Hoang (Hanley) T.T. NGUYEN | 8h |
| 27 | 3.1.2.3 | Study design & prepare pseudo codes |  | 2015-03-05 | 2015-03-05 | 26 |  | Hoang (Hanley) T.T. NGUYEN | 8h |
| 28 | 3.1.2.4 | Prepare UT case document |  | 2015-03-05 | 2015-03-05 | 26 |  | Hoang (Hanley) T.T. NGUYEN | 8h |
| 29 | 3.1.2.5 | Code for Web |  | 2015-03-06 | 2015-03-10 | 28 |  | Hoang (Hanley) T.T. NGUYEN | 24h |
| 30 | 3.1.2.6 | Code for WP |  | 2015-03-06 | 2015-03-10 | 28 |  | Trung (Truman) Q. NGUYEN | 24h |
| 31 | 3.1.2.7 | Code for Android |  | 2015-03-06 | 2015-03-10 | 28 |  | Huy (Harold) Q. BUI | 24h |
| 32 | 3.1.2.8 | Self code review & Fix bugs |  | 2015-03-11 | 2015-03-11 | 31 |  | Hoang (Hanley) T.T. NGUYEN | 8h |
| 33 | 3.1.2.9 | Peer code review & Fix bugs |  | 2015-03-11 | 2015-03-11 | 31 |  | Hoang (Hanley) T.T. NGUYEN | 8h |
| 34 | 3.1.2.10 | Update UT case document |  | 2015-03-12 | 2015-03-12 | 33 |  | Hoang (Hanley) T.T. NGUYEN | 8h |
| 35 | 3.1.2.11 | Prepare UT scripts |  | 2015-03-13 | 2015-03-13 | 34 |  | Hoang (Hanley) T.T. NGUYEN | 8h |
| 36 | 3.1.2.12 | Perform UT & Fix bugs |  | 2015-03-16 | 2015-03-16 | 35 |  | Hoang (Hanley) T.T. NGUYEN | 8h |

| ID | WBS | Task | Start | Finish | Predecessors | Resources | Work |
| --- | --- | --- | --- | --- | --- | --- | --- |
| 37 | 3.1.3 | **User Register** | 2015-03-03 | 2015-03-16 |  |  | 144h |
| 38 | 3.1.3.1 | Study requirement | 2015-03-03 | 2015-03-03 |  | Trung (Truman) Q. NGUYEN | 8h |
| 39 | 3.1.3.2 | Prepare GUI prototypes | 2015-03-04 | 2015-03-04 | 38 | Trung (Truman) Q. NGUYEN | 8h |
| 40 | 3.1.3.3 | Study design & prepare pseudo codes | 2015-03-05 | 2015-03-05 | 39 | Trung (Truman) Q. NGUYEN | 8h |
| 41 | 3.1.3.4 | Prepare UT case document | 2015-03-05 | 2015-03-05 | 39 | Trung (Truman) Q. NGUYEN | 8h |
| 42 | 3.1.3.5 | Code for Web | 2015-03-06 | 2015-03-10 | 41 | Hoang (Hanley) T.T. NGUYEN | 24h |
| 43 | 3.1.3.6 | Code for WP | 2015-03-06 | 2015-03-10 | 41 | Trung (Truman) Q. NGUYEN | 24h |
| 44 | 3.1.3.7 | Code for Android | 2015-03-06 | 2015-03-10 | 41 | Huy (Harold) Q. BUI | 24h |
| 45 | 3.1.3.8 | Self code review & Fix bugs | 2015-03-11 | 2015-03-11 | 44 | Trung (Truman) Q. NGUYEN | 8h |
| 46 | 3.1.3.9 | Peer code review & Fix bugs | 2015-03-11 | 2015-03-11 | 44 | Trung (Truman) Q. NGUYEN | 8h |
| 47 | 3.1.3.10 | Update UT case document | 2015-03-12 | 2015-03-12 | 46 | Trung (Truman) Q. NGUYEN | 8h |
| 48 | 3.1.3.11 | Prepare UT scripts | 2015-03-13 | 2015-03-13 | 47 | Trung (Truman) Q. NGUYEN | 8h |
| 49 | 3.1.3.12 | Perform UT & Fix bugs | 2015-03-16 | 2015-03-16 | 48 | Trung (Truman) Q. NGUYEN | 8h |
| 50 | 3.1.4 | **Profile** | 2015-03-03 | 2015-03-16 |  |  | 144h |
| 51 | 3.1.4.1 | Study requirement | 2015-03-03 | 2015-03-03 |  | Huy (Harold) Q. BUI | 8h |
| 52 | 3.1.4.2 | Prepare GUI prototypes | 2015-03-04 | 2015-03-04 | 51 | Huy (Harold) Q. BUI | 8h |
| 53 | 3.1.4.3 | Study design & prepare pseudo codes | 2015-03-05 | 2015-03-05 | 52 | Huy (Harold) Q. BUI | 8h |
| 54 | 3.1.4.4 | Prepare UT case document | 2015-03-05 | 2015-03-05 | 52 | Huy (Harold) Q. BUI | 8h |
| 55 | 3.1.4.5 | Code for Web | 2015-03-06 | 2015-03-10 | 54 | Hoang (Hanley) T.T. NGUYEN | 24h |
| 56 | 3.1.4.6 | Code for WP | 2015-03-06 | 2015-03-10 | 54 | Trung (Truman) Q. NGUYEN | 24h |
| 57 | 3.1.4.7 | Code for Android | 2015-03-06 | 2015-03-10 | 54 | Huy (Harold) Q. BUI | 24h |
| 58 | 3.1.4.8 | Self code review & Fix bugs | 2015-03-11 | 2015-03-11 | 57 | Hoang (Hanley) T.T. NGUYEN | 8h |
| 59 | 3.1.4.9 | Peer code review & Fix bugs | 2015-03-11 | 2015-03-11 | 57 | Hoang (Hanley) T.T. NGUYEN | 8h |
| 60 | 3.1.4.10 | Update UT case document | 2015-03-12 | 2015-03-12 | 59 | Hoang (Hanley) T.T. NGUYEN | 8h |
| 61 | 3.1.4.11 | Prepare UT scripts | 2015-03-13 | 2015-03-13 | 60 | Hoang (Hanley) T.T. NGUYEN | 8h |
| 62 | 3.1.4.12 | Perform UT & Fix bugs | 2015-03-16 | 2015-03-16 | 61 | Hoang (Hanley) T.T. NGUYEN | 8h |

| ID | WBS | Task | Start | Finish | Predecessors | Resources | Work |
| --- | --- | --- | --- | --- | --- | --- | --- |
| 63 | 3.1.5 | **List of itineraries (Map and list)** | 2015-03-03 | 2015-03-16 |  |  | 144h |
| 64 | 3.1.5.1 | Study requirement | 2015-03-03 | 2015-03-03 |  | Cuong (Cody) N. NGUYEN | 8h |
| 65 | 3.1.5.2 | Prepare GUI prototypes | 2015-03-04 | 2015-03-04 | 64 | Cuong (Cody) N. NGUYEN | 8h |
| 66 | 3.1.5.3 | Study design & prepare pseudo codes | 2015-03-05 | 2015-03-05 | 65 | Cuong (Cody) N. NGUYEN | 8h |
| 67 | 3.1.5.4 | Prepare UT case document | 2015-03-05 | 2015-03-05 | 65 | Cuong (Cody) N. NGUYEN | 8h |
| 68 | 3.1.5.5 | Code for Web | 2015-03-06 | 2015-03-10 | 67 | Hoang (Hanley) T.T. NGUYEN | 24h |
| 69 | 3.1.5.6 | Code for WP | 2015-03-06 | 2015-03-10 | 67 | Trung (Truman) Q. NGUYEN | 24h |
| 70 | 3.1.5.7 | Code for Android | 2015-03-06 | 2015-03-10 | 67 | Huy (Harold) Q. BUI | 24h |
| 71 | 3.1.5.8 | Self code review & Fix bugs | 2015-03-11 | 2015-03-11 | 70 | Cuong (Cody) N. NGUYEN | 8h |
| 72 | 3.1.5.9 | Peer code review & Fix bugs | 2015-03-11 | 2015-03-11 | 70 | Cuong (Cody) N. NGUYEN | 8h |
| 73 | 3.1.5.10 | Update UT case document | 2015-03-12 | 2015-03-12 | 72 | Cuong (Cody) N. NGUYEN | 8h |
| 74 | 3.1.5.11 | Prepare UT scripts | 2015-03-13 | 2015-03-13 | 73 | Cuong (Cody) N. NGUYEN | 8h |
| 75 | 3.1.5.12 | Perform UT & Fix bugs | 2015-03-16 | 2015-03-16 | 74 | Cuong (Cody) N. NGUYEN | 8h |
| 76 | 3.1.6 | **Manage Itineraries for Staff** | 2015-03-03 | 2015-03-16 |  | Vi (Vidal) T. LE | 96h |
| 77 | 3.1.6.1 | Study requirement | 2015-03-03 | 2015-03-03 |  |  | 8h |
| 78 | 3.1.6.2 | Prepare GUI prototypes | 2015-03-04 | 2015-03-04 | 77 |  | 8h |
| 79 | 3.1.6.3 | Study design & prepare pseudo codes | 2015-03-05 | 2015-03-05 | 78 |  | 8h |
| 80 | 3.1.6.4 | Prepare UT case document | 2015-03-05 | 2015-03-05 | 78 |  | 8h |
| 81 | 3.1.6.5 | Code | 2015-03-06 | 2015-03-10 | 80 |  | 24h |
| 82 | 3.1.6.6 | Self code review & Fix bugs | 2015-03-11 | 2015-03-11 | 81 |  | 8h |
| 83 | 3.1.6.7 | Peer code review & Fix bugs | 2015-03-11 | 2015-03-11 | 81 |  | 8h |
| 84 | 3.1.6.8 | Update UT case document | 2015-03-12 | 2015-03-12 | 83 |  | 8h |
| 85 | 3.1.6.9 | Prepare UT scripts | 2015-03-13 | 2015-03-13 | 84 |  | 8h |
| 86 | 3.1.6.10 | Perform UT & Fix bugs | 2015-03-16 | 2015-03-16 | 85 |  | 8h |

| ID | WBS | Task | Start | Finish | Predecessors | Resources | Work |
| --- | --- | --- | --- | --- | --- | --- | --- |
| 87 | 3.1.7 | **Manage Itineraries for User** | 2015-03-03 | 2015-03-16 |  |  | 144h |
| 88 | 3.1.7.1 | Study requirement | 2015-03-03 | 2015-03-03 |  | Thanh (Terry) D. TRAN | 8h |
| 89 | 3.1.7.2 | Prepare GUI prototypes | 2015-03-04 | 2015-03-04 | 88 | Thanh (Terry) D. TRAN | 8h |
| 90 | 3.1.7.3 | Study design & prepare pseudo codes | 2015-03-05 | 2015-03-05 | 89 | Thanh (Terry) D. TRAN | 8h |
| 91 | 3.1.7.4 | Prepare UT case document | 2015-03-05 | 2015-03-05 | 89 | Thanh (Terry) D. TRAN | 8h |
| 92 | 3.1.7.5 | Code for Web | 2015-03-06 | 2015-03-10 | 91 | Hoang (Hanley) T.T. NGUYEN | 24h |
| 93 | 3.1.7.6 | Code for Android | 2015-03-06 | 2015-03-10 | 91 | Huy (Harold) Q. BUI | 24h |
| 94 | 3.1.7.7 | Code for WP | 2015-03-06 | 2015-03-10 | 91 | Trung (Truman) Q. NGUYEN | 24h |
| 95 | 3.1.7.8 | Self code review & Fix bugs | 2015-03-11 | 2015-03-11 | 94 | Thanh (Terry) D. TRAN | 8h |
| 96 | 3.1.7.9 | Peer code review & Fix bugs | 2015-03-11 | 2015-03-11 | 94 | Thanh (Terry) D. TRAN | 8h |
| 97 | 3.1.7.10 | Update UT case document | 2015-03-12 | 2015-03-12 | 96 | Thanh (Terry) D. TRAN | 8h |
| 98 | 3.1.7.11 | Prepare UT scripts | 2015-03-13 | 2015-03-13 | 97 | Thanh (Terry) D. TRAN | 8h |
| 99 | 3.1.7.12 | Perform UT & Fix bugs | 2015-03-16 | 2015-03-16 | 98 | Thanh (Terry) D. TRAN | 8h |
| 100 | 3.1.8 | **RESTFul for User (Create, get, update, delete User)** | 2015-03-03 | 2015-03-16 |  |  | 88h |
| 101 | 3.1.8.1 | Study requirement | 2015-03-03 | 2015-03-03 |  | Vi (Vidal) T. LE | 8h |
| 102 | 3.1.8.2 | Study design & prepare pseudo codes | 2015-03-04 | 2015-03-04 | 101 | Vi (Vidal) T. LE | 8h |
| 103 | 3.1.8.3 | Prepare UT case document | 2015-03-05 | 2015-03-05 | 102 | Vi (Vidal) T. LE | 8h |
| 104 | 3.1.8.4 | Code | 2015-03-06 | 2015-03-10 | 103 | Thanh (Terry) D. TRAN | 24h |
| 105 | 3.1.8.5 | Self code review & Fix bugs | 2015-03-11 | 2015-03-11 | 104 | Vi (Vidal) T. LE | 8h |
| 106 | 3.1.8.6 | Peer code review & Fix bugs | 2015-03-11 | 2015-03-11 | 104 | Vi (Vidal) T. LE | 8h |
| 107 | 3.1.8.7 | Update UT case document | 2015-03-12 | 2015-03-12 | 106 | Vi (Vidal) T. LE | 8h |
| 108 | 3.1.8.8 | Prepare UT scripts | 2015-03-13 | 2015-03-13 | 107 | Vi (Vidal) T. LE | 8h |
| 109 | 3.1.8.9 | Perform UT & Fix bugs | 2015-03-16 | 2015-03-16 | 108 | Vi (Vidal) T. LE | 8h |
| 110 | 3.1.9 | **RESTFul for Itinerary** | 2015-03-03 | 2015-03-16 |  | Thanh (Terry) D. TRAN | 88h |
| 111 | 3.1.9.1 | Study requirement | 2015-03-03 | 2015-03-03 |  |  | 8h |
| 112 | 3.1.9.2 | Study design & prepare pseudo codes | 2015-03-04 | 2015-03-04 | 111 |  | 8h |
| 113 | 3.1.9.3 | Prepare UT case document | 2015-03-05 | 2015-03-05 | 112 |  | 8h |
| 114 | 3.1.9.4 | Code | 2015-03-06 | 2015-03-10 | 113 |  | 24h |
| 115 | 3.1.9.5 | Self code review & Fix bugs | 2015-03-11 | 2015-03-11 | 114 |  | 8h |
| 116 | 3.1.9.6 | Peer code review & Fix bugs | 2015-03-11 | 2015-03-11 | 114 |  | 8h |
| 117 | 3.1.9.7 | Update UT case document | 2015-03-12 | 2015-03-12 | 116 |  | 8h |
| 118 | 3.1.9.8 | Prepare UT scripts | 2015-03-13 | 2015-03-13 | 117 |  | 8h |
| 119 | 3.1.9.9 | Perform UT & Fix bugs | 2015-03-16 | 2015-03-16 | 118 |  | 8h |

| ID | WBS | Task | Start | Finish | Predecessors | Complete | Resources | Work |
| --- | --- | --- | --- | --- | --- | --- | --- | --- |
| 120 | 3.1.10 | **RESTFul for Staffs** | 2015-03-03 | 2015-03-16 |  |  | Thanh (Terry) D. TRAN | 88h |
| 121 | 3.1.10.1 | Study requirement | 2015-03-03 | 2015-03-03 |  |  |  | 8h |
| 122 | 3.1.10.2 | Study design & prepare pseudo codes | 2015-03-04 | 2015-03-04 | 121 |  |  | 8h |
| 123 | 3.1.10.3 | Prepare UT case document | 2015-03-05 | 2015-03-05 | 122 |  |  | 8h |
| 124 | 3.1.10.4 | Code | 2015-03-06 | 2015-03-10 | 123 | 23% |  | 24h |
| 125 | 3.1.10.5 | Self code review & Fix bugs | 2015-03-11 | 2015-03-11 | 124 |  |  | 8h |
| 126 | 3.1.10.6 | Peer code review & Fix bugs | 2015-03-11 | 2015-03-11 | 124 |  |  | 8h |
| 127 | 3.1.10.7 | Update UT case document | 2015-03-12 | 2015-03-12 | 126 |  |  | 8h |
| 128 | 3.1.10.8 | Prepare UT scripts | 2015-03-13 | 2015-03-13 | 127 |  |  | 8h |
| 129 | 3.1.10.9 | Perform UT & Fix bugs | 2015-03-16 | 2015-03-16 | 128 |  |  | 8h |
| 130 | 3.2 | **Iteration 2 - Common, Programme, Geogra** | 2015-03-17 | 2015-03-31 | 10 |  |  | 1200h |
| 131 | 3.2.1 | **Manage Feedback** | 2015-03-17 | 2015-03-31 |  |  |  | 168h |
| 132 | 3.2.1.1 | Study requirement | 2015-03-17 | 2015-03-17 |  |  | Thanh (Terry) D. TRAN | 8h |
| 133 | 3.2.1.2 | Prepare GUI prototypes | 2015-03-18 | 2015-03-18 | 132 |  | Thanh (Terry) D. TRAN | 8h |
| 134 | 3.2.1.3 | Study design & prepare pseudo codes | 2015-03-19 | 2015-03-19 | 133 |  | Thanh (Terry) D. TRAN | 8h |
| 135 | 3.2.1.4 | Prepare UT case document | 2015-03-19 | 2015-03-19 | 133 |  | Thanh (Terry) D. TRAN | 8h |
| 136 | 3.2.1.5 | Code for Web | 2015-03-20 | 2015-03-25 | 135 |  | Hoang (Hanley) T.T. NGUYEN | 32h |
| 137 | 3.2.1.6 | Code for WP | 2015-03-20 | 2015-03-25 | 135 |  | Trung (Truman) Q. NGUYEN | 32h |
| 138 | 3.2.1.7 | Code for Android | 2015-03-20 | 2015-03-25 | 135 |  | Huy (Harold) Q. BUI | 32h |
| 139 | 3.2.1.8 | Self code review & Fix bugs | 2015-03-26 | 2015-03-26 | 138 |  | Thanh (Terry) D. TRAN | 8h |
| 140 | 3.2.1.9 | Peer code review & Fix bugs | 2015-03-26 | 2015-03-26 | 138 |  | Thanh (Terry) D. TRAN | 8h |
| 141 | 3.2.1.10 | Update UT case document | 2015-03-27 | 2015-03-27 | 140 |  | Thanh (Terry) D. TRAN | 8h |
| 142 | 3.2.1.11 | Prepare UT scripts | 2015-03-30 | 2015-03-30 | 141 |  | Thanh (Terry) D. TRAN | 8h |
| 143 | 3.2.1.12 | Perform UT & Fix bugs | 2015-03-31 | 2015-03-31 | 142 |  | Thanh (Terry) D. TRAN | 8h |

| ID | WBS | Task | Start | Finish | Predecessors | Resources | Work |
| --- | --- | --- | --- | --- | --- | --- | --- |
| 144 | 3.2.2 | **Send Feedback** | 2015-03-17 | 2015-03-31 |  |  | 168h |
| 145 | 3.2.2.1 | Study requirement | 2015-03-17 | 2015-03-17 |  | Huy (Harold) Q. BUI | 8h |
| 146 | 3.2.2.2 | Prepare GUI prototypes | 2015-03-18 | 2015-03-18 | 145 | Huy (Harold) Q. BUI | 8h |
| 147 | 3.2.2.3 | Study design & prepare pseudo codes | 2015-03-19 | 2015-03-19 | 146 | Huy (Harold) Q. BUI | 8h |
| 148 | 3.2.2.4 | Prepare UT case document | 2015-03-19 | 2015-03-19 | 146 | Huy (Harold) Q. BUI | 8h |
| 149 | 3.2.2.5 | Code for Web | 2015-03-20 | 2015-03-25 | 148 | Hoang (Hanley) T.T. NGUYEN | 32h |
| 150 | 3.2.2.6 | Code for WP | 2015-03-20 | 2015-03-25 | 148 | Trung (Truman) Q. NGUYEN | 32h |
| 151 | 3.2.2.7 | Code for Android | 2015-03-20 | 2015-03-25 | 148 | Cuong (Cody) N. NGUYEN | 32h |
| 152 | 3.2.2.8 | Self code review & Fix bugs | 2015-03-26 | 2015-03-26 | 151 | Huy (Harold) Q. BUI | 8h |
| 153 | 3.2.2.9 | Peer code review & Fix bugs | 2015-03-26 | 2015-03-26 | 151 | Huy (Harold) Q. BUI | 8h |
| 154 | 3.2.2.10 | Update UT case document | 2015-03-27 | 2015-03-27 | 153 | Huy (Harold) Q. BUI | 8h |
| 155 | 3.2.2.11 | Prepare UT scripts | 2015-03-30 | 2015-03-30 | 154 | Huy (Harold) Q. BUI | 8h |
| 156 | 3.2.2.12 | Perform UT & Fix bugs | 2015-03-31 | 2015-03-31 | 155 | Huy (Harold) Q. BUI | 8h |
| 157 | 3.2.3 | **Search Itinerary** | 2015-03-17 | 2015-03-31 |  |  | 168h |
| 158 | 3.2.3.1 | Study requirement | 2015-03-17 | 2015-03-17 |  | Cuong (Cody) N. NGUYEN | 8h |
| 159 | 3.2.3.2 | Prepare GUI prototypes | 2015-03-18 | 2015-03-18 | 158 | Cuong (Cody) N. NGUYEN | 8h |
| 160 | 3.2.3.3 | Study design & prepare pseudo codes | 2015-03-19 | 2015-03-19 | 159 | Cuong (Cody) N. NGUYEN | 8h |
| 161 | 3.2.3.4 | Prepare UT case document | 2015-03-19 | 2015-03-19 | 159 | Cuong (Cody) N. NGUYEN | 8h |
| 162 | 3.2.3.5 | Code for Web | 2015-03-20 | 2015-03-25 | 161 | Hoang (Hanley) T.T. NGUYEN | 32h |
| 163 | 3.2.3.6 | Code for WP | 2015-03-20 | 2015-03-25 | 161 | Trung (Truman) Q. NGUYEN | 32h |
| 164 | 3.2.3.7 | Code for Android | 2015-03-20 | 2015-03-25 | 161 | Cuong (Cody) N. NGUYEN | 32h |
| 165 | 3.2.3.8 | Self code review & Fix bugs | 2015-03-26 | 2015-03-26 | 164 | Cuong (Cody) N. NGUYEN | 8h |
| 166 | 3.2.3.9 | Peer code review & Fix bugs | 2015-03-26 | 2015-03-26 | 164 | Cuong (Cody) N. NGUYEN | 8h |
| 167 | 3.2.3.10 | Update UT case document | 2015-03-27 | 2015-03-27 | 166 | Cuong (Cody) N. NGUYEN | 8h |
| 168 | 3.2.3.11 | Prepare UT scripts | 2015-03-30 | 2015-03-30 | 167 | Cuong (Cody) N. NGUYEN | 8h |
| 169 | 3.2.3.12 | Perform UT & Fix bugs | 2015-03-31 | 2015-03-31 | 168 | Cuong (Cody) N. NGUYEN | 8h |

| ID | WBS | Task | Start | Finish | Predecessors | Resources | Work |
| --- | --- | --- | --- | --- | --- | --- | --- |
| 170 | 3.2.4 | **Register Itinerary** | 2015-03-17 | 2015-03-31 |  |  | 168h |
| 171 | 3.2.4.1 | Study requirement | 2015-03-17 | 2015-03-17 |  | Hoang (Hanley) T.T. NGUYEN | 8h |
| 172 | 3.2.4.2 | Prepare GUI prototypes | 2015-03-18 | 2015-03-18 | 171 | Hoang (Hanley) T.T. NGUYEN | 8h |
| 173 | 3.2.4.3 | Study design & prepare pseudo codes | 2015-03-19 | 2015-03-19 | 172 | Hoang (Hanley) T.T. NGUYEN | 8h |
| 174 | 3.2.4.4 | Prepare UT case document | 2015-03-19 | 2015-03-19 | 172 | Hoang (Hanley) T.T. NGUYEN | 8h |
| 175 | 3.2.4.5 | Code for Web | 2015-03-20 | 2015-03-25 | 174 | Hoang (Hanley) T.T. NGUYEN | 32h |
| 176 | 3.2.4.6 | Code for WP | 2015-03-20 | 2015-03-25 | 174 | Trung (Truman) Q. NGUYEN | 32h |
| 177 | 3.2.4.7 | Code for Android | 2015-03-20 | 2015-03-25 | 174 | Cuong (Cody) N. NGUYEN | 32h |
| 178 | 3.2.4.8 | Self code review & Fix bugs | 2015-03-26 | 2015-03-26 | 177 | Hoang (Hanley) T.T. NGUYEN | 8h |
| 179 | 3.2.4.9 | Peer code review & Fix bugs | 2015-03-26 | 2015-03-26 | 177 | Hoang (Hanley) T.T. NGUYEN | 8h |
| 180 | 3.2.4.10 | Update UT case document | 2015-03-27 | 2015-03-27 | 179 | Hoang (Hanley) T.T. NGUYEN | 8h |
| 181 | 3.2.4.11 | Prepare UT scripts | 2015-03-30 | 2015-03-30 | 180 | Hoang (Hanley) T.T. NGUYEN | 8h |
| 182 | 3.2.4.12 | Perform UT & Fix bugs | 2015-03-31 | 2015-03-31 | 181 | Hoang (Hanley) T.T. NGUYEN | 8h |
| 183 | 3.2.5 | **Update profile** | 2015-03-17 | 2015-03-31 |  |  | 168h |
| 184 | 3.2.5.1 | Study requirement | 2015-03-17 | 2015-03-17 |  | Hoang (Hanley) T.T. NGUYEN | 8h |
| 185 | 3.2.5.2 | Prepare GUI prototypes | 2015-03-18 | 2015-03-18 | 184 | Hoang (Hanley) T.T. NGUYEN | 8h |
| 186 | 3.2.5.3 | Study design & prepare pseudo codes | 2015-03-19 | 2015-03-19 | 185 | Hoang (Hanley) T.T. NGUYEN | 8h |
| 187 | 3.2.5.4 | Prepare UT case document | 2015-03-19 | 2015-03-19 | 185 | Hoang (Hanley) T.T. NGUYEN | 8h |
| 188 | 3.2.5.5 | Code for Web | 2015-03-20 | 2015-03-25 | 187 | Hoang (Hanley) T.T. NGUYEN | 32h |
| 189 | 3.2.5.6 | Code for WP | 2015-03-20 | 2015-03-25 | 187 | Trung (Truman) Q. NGUYEN | 32h |
| 190 | 3.2.5.7 | Code for Android | 2015-03-20 | 2015-03-25 | 187 | Huy (Harold) Q. BUI | 32h |
| 191 | 3.2.5.8 | Self code review & Fix bugs | 2015-03-26 | 2015-03-26 | 190 | Hoang (Hanley) T.T. NGUYEN | 8h |
| 192 | 3.2.5.9 | Peer code review & Fix bugs | 2015-03-26 | 2015-03-26 | 190 | Hoang (Hanley) T.T. NGUYEN | 8h |
| 193 | 3.2.5.10 | Update UT case document | 2015-03-27 | 2015-03-27 | 191 | Hoang (Hanley) T.T. NGUYEN | 8h |
| 194 | 3.2.5.11 | Prepare UT scripts | 2015-03-30 | 2015-03-30 | 193 | Hoang (Hanley) T.T. NGUYEN | 8h |
| 195 | 3.2.5.12 | Perform UT & Fix bugs | 2015-03-31 | 2015-03-31 | 194 | Hoang (Hanley) T.T. NGUYEN | 8h |

| ID | WBS | Task | Start | Finish | Predecessors | Resources | Work |
| --- | --- | --- | --- | --- | --- | --- | --- |
| 196 | 3.2.6 | **Manage Users** | 2015-03-17 | 2015-03-30 |  |  | 96h |
| 197 | 3.2.6.1 | Study requirement | 2015-03-17 | 2015-03-17 |  | Trung (Truman) Q. NGUYEN | 8h |
| 198 | 3.2.6.2 | Prepare GUI prototypes | 2015-03-18 | 2015-03-18 | 197 | Trung (Truman) Q. NGUYEN | 8h |
| 199 | 3.2.6.3 | Study design & prepare pseudo codes | 2015-03-19 | 2015-03-19 | 198 | Trung (Truman) Q. NGUYEN | 8h |
| 200 | 3.2.6.4 | Prepare UT case document | 2015-03-19 | 2015-03-19 | 198 | Trung (Truman) Q. NGUYEN | 8h |
| 201 | 3.2.6.5 | Code | 2015-03-20 | 2015-03-24 | 200 | Thanh (Terry) D. TRAN | 24h |
| 202 | 3.2.6.6 | Self code review & Fix bugs | 2015-03-25 | 2015-03-25 | 201 | Trung (Truman) Q. NGUYEN | 8h |
| 203 | 3.2.6.7 | Peer code review & Fix bugs | 2015-03-25 | 2015-03-25 | 201 | Trung (Truman) Q. NGUYEN | 8h |
| 204 | 3.2.6.8 | Update UT case document | 2015-03-26 | 2015-03-26 | 203 | Trung (Truman) Q. NGUYEN | 8h |
| 205 | 3.2.6.9 | Prepare UT scripts | 2015-03-27 | 2015-03-27 | 204 | Trung (Truman) Q. NGUYEN | 8h |
| 206 | 3.2.6.10 | Perform UT & Fix bugs | 2015-03-30 | 2015-03-30 | 205 | Trung (Truman) Q. NGUYEN | 8h |
| 207 | 3.2.7 | **RESTFul for manage user** | 2015-03-17 | 2015-03-30 |  | Vi (Vidal) T. LE | 88h |
| 208 | 3.2.7.1 | Study requirement | 2015-03-17 | 2015-03-17 |  |  | 8h |
| 209 | 3.2.7.2 | Study design & prepare pseudo codes | 2015-03-18 | 2015-03-18 | 208 |  | 8h |
| 210 | 3.2.7.3 | Prepare UT case document | 2015-03-19 | 2015-03-19 | 209 |  | 8h |
| 211 | 3.2.7.4 | Code | 2015-03-20 | 2015-03-24 | 210 |  | 24h |
| 212 | 3.2.7.5 | Self code review & Fix bugs | 2015-03-25 | 2015-03-25 | 211 |  | 8h |
| 213 | 3.2.7.6 | Peer code review & Fix bugs | 2015-03-25 | 2015-03-25 | 211 |  | 8h |
| 214 | 3.2.7.7 | Update UT case document | 2015-03-26 | 2015-03-26 | 213 |  | 8h |
| 215 | 3.2.7.8 | Prepare UT scripts | 2015-03-27 | 2015-03-27 | 214 |  | 8h |
| 216 | 3.2.7.9 | Perform UT & Fix bugs | 2015-03-30 | 2015-03-30 | 215 |  | 8h |
| 217 | 3.2.8 | **RESTFul for manage schedule** | 2015-03-17 | 2015-03-30 |  | Vi (Vidal) T. LE | 88h |
| 218 | 3.2.8.1 | Study requirement | 2015-03-17 | 2015-03-17 |  |  | 8h |
| 219 | 3.2.8.2 | Study design & prepare pseudo codes | 2015-03-18 | 2015-03-18 | 218 |  | 8h |
| 220 | 3.2.8.3 | Prepare UT case document | 2015-03-19 | 2015-03-19 | 219 |  | 8h |
| 221 | 3.2.8.4 | Code | 2015-03-20 | 2015-03-24 | 220 |  | 24h |
| 222 | 3.2.8.5 | Self code review & Fix bugs | 2015-03-25 | 2015-03-25 | 221 |  | 8h |
| 223 | 3.2.8.6 | Peer code review & Fix bugs | 2015-03-25 | 2015-03-25 | 221 |  | 8h |
| 224 | 3.2.8.7 | Update UT case document | 2015-03-26 | 2015-03-26 | 223 |  | 8h |
| 225 | 3.2.8.8 | Prepare UT scripts | 2015-03-27 | 2015-03-27 | 224 |  | 8h |
| 226 | 3.2.8.9 | Perform UT & Fix bugs | 2015-03-30 | 2015-03-30 | 225 |  | 8h |

| ID | WBS | Task | Start | Finish | Predecessors | Resources | Work |
| --- | --- | --- | --- | --- | --- | --- | --- |
| 227 | 3.2.9 | **RESTFul for Feedback** | 2015-03-17 | 2015-03-30 |  | Thanh (Terry) D. TRAN | 88h |
| 228 | 3.2.9.1 | Study requirement | 2015-03-17 | 2015-03-17 |  |  | 8h |
| 229 | 3.2.9.2 | Study design & prepare pseudo codes | 2015-03-18 | 2015-03-18 | 228 |  | 8h |
| 230 | 3.2.9.3 | Prepare UT case document | 2015-03-19 | 2015-03-19 | 229 |  | 8h |
| 231 | 3.2.9.4 | Code | 2015-03-20 | 2015-03-24 | 230 |  | 24h |
| 232 | 3.2.9.5 | Self code review & Fix bugs | 2015-03-25 | 2015-03-25 | 231 |  | 8h |
| 233 | 3.2.9.6 | Peer code review & Fix bugs | 2015-03-25 | 2015-03-25 | 231 |  | 8h |
| 234 | 3.2.9.7 | Update UT case document | 2015-03-26 | 2015-03-26 | 233 |  | 8h |
| 235 | 3.2.9.8 | Prepare UT scripts | 2015-03-27 | 2015-03-27 | 234 |  | 8h |
| 236 | 3.2.9.9 | Perform UT & Fix bugs | 2015-03-30 | 2015-03-30 | 235 |  | 8h |
| 237 | 3.3 | **Iteration 3 - Common, Programme, Geogra** | 2015-04-01 | 2015-04-14 | 130 |  | 672h |
| 238 | 3.3.1 | **Forgot password** | 2015-04-01 | 2015-04-13 |  |  | 136h |
| 239 | 3.3.1.1 | Study requirement | 2015-04-01 | 2015-04-01 |  | Trung (Truman) Q. NGUYEN | 8h |
| 240 | 3.3.1.2 | Study design & prepare pseudo codes | 2015-04-02 | 2015-04-02 | 239 | Trung (Truman) Q. NGUYEN | 8h |
| 241 | 3.3.1.3 | Prepare UT case document | 2015-04-02 | 2015-04-02 | 239 | Trung (Truman) Q. NGUYEN | 8h |
| 242 | 3.3.1.4 | Code for Web | 2015-04-03 | 2015-04-07 | 241 | Hoang (Hanley) T.T. NGUYEN | 24h |
| 243 | 3.3.1.5 | Code for WP | 2015-04-03 | 2015-04-07 | 241 | Trung (Truman) Q. NGUYEN | 24h |
| 244 | 3.3.1.6 | Code for Android | 2015-04-03 | 2015-04-07 | 241 | Cuong (Cody) N. NGUYEN | 24h |
| 245 | 3.3.1.7 | Self code review & Fix bugs | 2015-04-08 | 2015-04-08 | 244 | Trung (Truman) Q. NGUYEN | 8h |
| 246 | 3.3.1.8 | Peer code review & Fix bugs | 2015-04-08 | 2015-04-08 | 244 | Trung (Truman) Q. NGUYEN | 8h |
| 247 | 3.3.1.9 | Update UT case document | 2015-04-09 | 2015-04-09 | 246 | Trung (Truman) Q. NGUYEN | 8h |
| 248 | 3.3.1.10 | Prepare UT scripts | 2015-04-10 | 2015-04-10 | 247 | Trung (Truman) Q. NGUYEN | 8h |
| 249 | 3.3.1.11 | Perform UT & Fix bugs | 2015-04-13 | 2015-04-13 | 248 | Trung (Truman) Q. NGUYEN | 8h |
| 250 | 3.3.2 | **Manage Schedule** | 2015-04-01 | 2015-04-14 |  |  | 144h |
| 251 | 3.3.2.1 | Study requirement | 2015-04-01 | 2015-04-01 |  | Hoang (Hanley) T.T. NGUYEN | 8h |
| 252 | 3.3.2.2 | Prepare GUI prototypes | 2015-04-02 | 2015-04-02 | 251 | Hoang (Hanley) T.T. NGUYEN | 8h |
| 253 | 3.3.2.3 | Study design & prepare pseudo codes | 2015-04-03 | 2015-04-03 | 252 | Hoang (Hanley) T.T. NGUYEN | 8h |
| 254 | 3.3.2.4 | Prepare UT case document | 2015-04-03 | 2015-04-03 | 252 | Hoang (Hanley) T.T. NGUYEN | 8h |
| 255 | 3.3.2.5 | Code for Web | 2015-04-06 | 2015-04-08 | 254 | Hoang (Hanley) T.T. NGUYEN | 24h |
| 256 | 3.3.2.6 | Code for WP | 2015-04-06 | 2015-04-08 | 254 | Trung (Truman) Q. NGUYEN | 24h |
| 257 | 3.3.2.7 | Code for Android | 2015-04-06 | 2015-04-08 | 254 | Cuong (Cody) N. NGUYEN | 24h |
| 258 | 3.3.2.8 | Self code review & Fix bugs | 2015-04-09 | 2015-04-09 | 257 | Hoang (Hanley) T.T. NGUYEN | 8h |
| 259 | 3.3.2.9 | Peer code review & Fix bugs | 2015-04-09 | 2015-04-09 | 257 | Hoang (Hanley) T.T. NGUYEN | 8h |
| 260 | 3.3.2.10 | Update UT case document | 2015-04-10 | 2015-04-10 | 259 | Hoang (Hanley) T.T. NGUYEN | 8h |
| 261 | 3.3.2.11 | Prepare UT scripts | 2015-04-13 | 2015-04-13 | 260 | Hoang (Hanley) T.T. NGUYEN | 8h |
| 262 | 3.3.2.12 | Perform UT & Fix bugs | 2015-04-14 | 2015-04-14 | 261 | Hoang (Hanley) T.T. NGUYEN | 8h |

| ID | WBS | Task | Start | Finish | Predecessors | Resources | Work |
| --- | --- | --- | --- | --- | --- | --- | --- |
| 263 | 3.3.3 | **Detail schedule** | 2015-04-01 | 2015-04-14 |  |  | 144h |
| 264 | 3.3.3.1 | Study requirement | 2015-04-01 | 2015-04-01 |  | Huy (Harold) Q. BUI | 8h |
| 265 | 3.3.3.2 | Prepare GUI prototypes | 2015-04-02 | 2015-04-02 | 264 | Huy (Harold) Q. BUI | 8h |
| 266 | 3.3.3.3 | Study design & prepare pseudo codes | 2015-04-03 | 2015-04-03 | 265 | Huy (Harold) Q. BUI | 8h |
| 267 | 3.3.3.4 | Prepare UT case document | 2015-04-03 | 2015-04-03 | 265 | Huy (Harold) Q. BUI | 8h |
| 268 | 3.3.3.5 | Code for Web | 2015-04-06 | 2015-04-08 | 267 | Hoang (Hanley) T.T. NGUYEN | 24h |
| 269 | 3.3.3.6 | Code for WP | 2015-04-06 | 2015-04-08 | 267 | Trung (Truman) Q. NGUYEN | 24h |
| 270 | 3.3.3.7 | Code for Android | 2015-04-06 | 2015-04-08 | 267 | Huy (Harold) Q. BUI | 24h |
| 271 | 3.3.3.8 | Self code review & Fix bugs | 2015-04-09 | 2015-04-09 | 270 | Huy (Harold) Q. BUI | 8h |
| 272 | 3.3.3.9 | Peer code review & Fix bugs | 2015-04-09 | 2015-04-09 | 270 | Huy (Harold) Q. BUI | 8h |
| 273 | 3.3.3.10 | Update UT case document | 2015-04-10 | 2015-04-10 | 272 | Huy (Harold) Q. BUI | 8h |
| 274 | 3.3.3.11 | Prepare UT scripts | 2015-04-13 | 2015-04-13 | 273 | Huy (Harold) Q. BUI | 8h |
| 275 | 3.3.3.12 | Perform UT & Fix bugs | 2015-04-14 | 2015-04-14 | 274 | Huy (Harold) Q. BUI | 8h |
| 276 | 3.3.4 | **Notification** | 2015-04-01 | 2015-04-14 |  |  | 160h |
| 277 | 3.3.4.1 | Study requirement | 2015-04-01 | 2015-04-01 |  | Cuong (Cody) N. NGUYEN | 8h |
| 278 | 3.3.4.2 | Study design & prepare pseudo codes | 2015-04-02 | 2015-04-02 | 277 | Cuong (Cody) N. NGUYEN | 8h |
| 279 | 3.3.4.3 | Prepare UT case document | 2015-04-02 | 2015-04-02 | 277 | Cuong (Cody) N. NGUYEN | 8h |
| 280 | 3.3.4.4 | Code for Web | 2015-04-03 | 2015-04-08 | 279 | Hoang (Hanley) T.T. NGUYEN | 32h |
| 281 | 3.3.4.5 | Code for WP | 2015-04-03 | 2015-04-08 | 279 | Trung (Truman) Q. NGUYEN | 32h |
| 282 | 3.3.4.6 | Code for Android | 2015-04-03 | 2015-04-08 | 279 | Cuong (Cody) N. NGUYEN | 32h |
| 283 | 3.3.4.7 | Self code review & Fix bugs | 2015-04-09 | 2015-04-09 | 282 | Cuong (Cody) N. NGUYEN | 8h |
| 284 | 3.3.4.8 | Peer code review & Fix bugs | 2015-04-09 | 2015-04-09 | 282 | Cuong (Cody) N. NGUYEN | 8h |
| 285 | 3.3.4.9 | Update UT case document | 2015-04-10 | 2015-04-10 | 284 | Cuong (Cody) N. NGUYEN | 8h |
| 286 | 3.3.4.10 | Prepare UT scripts | 2015-04-13 | 2015-04-13 | 285 | Cuong (Cody) N. NGUYEN | 8h |
| 287 | 3.3.4.11 | Perform UT & Fix bugs | 2015-04-14 | 2015-04-14 | 286 | Cuong (Cody) N. NGUYEN | 8h |

| ID | WBS | Task | Start | Finish | Predecessors | Resources | Work |
| --- | --- | --- | --- | --- | --- | --- | --- |
| 288 | 3.3.5 | **RESTFul for Comment and Rating** | 2015-04-01 | 2015-04-13 |  | Vi (Vidal) T. LE; Thanh (Terry) D. TRAN | 88h |
| 289 | 3.3.5.1 | Study requirement | 2015-04-01 | 2015-04-01 |  |  | 8h |
| 290 | 3.3.5.2 | Study design & prepare pseudo codes | 2015-04-02 | 2015-04-02 | 289 |  | 8h |
| 291 | 3.3.5.3 | Prepare UT case document | 2015-04-02 | 2015-04-02 | 289 |  | 8h |
| 292 | 3.3.5.4 | Code | 2015-04-03 | 2015-04-07 | 291 |  | 24h |
| 293 | 3.3.5.5 | Self code review & Fix bugs | 2015-04-08 | 2015-04-08 | 292 |  | 8h |
| 294 | 3.3.5.6 | Peer code review & Fix bugs | 2015-04-08 | 2015-04-08 | 292 |  | 8h |
| 295 | 3.3.5.7 | Update UT case document | 2015-04-09 | 2015-04-09 | 294 |  | 8h |
| 296 | 3.3.5.8 | Prepare UT scripts | 2015-04-10 | 2015-04-10 | 295 |  | 8h |
| 297 | 3.3.5.9 | Perform UT & Fix bugs | 2015-04-13 | 2015-04-13 | 296 |  | 8h |
| 298 | 3.4 | **Iteration 4 - Common, Programme, Geogra** | 2015-04-15 | 2015-05-07 | 237 |  | 1456h |
| 299 | 3.4.1 | **Rating** | 2015-04-15 | 2015-04-28 |  |  | 144h |
| 300 | 3.4.1.1 | Study requirement | 2015-04-15 | 2015-04-15 |  | Cuong (Cody) N. NGUYEN | 8h |
| 301 | 3.4.1.2 | Prepare GUI prototypes | 2015-04-16 | 2015-04-16 | 300 | Cuong (Cody) N. NGUYEN | 8h |
| 302 | 3.4.1.3 | Study design & prepare pseudo codes | 2015-04-17 | 2015-04-17 | 301 | Cuong (Cody) N. NGUYEN | 8h |
| 303 | 3.4.1.4 | Prepare UT case document | 2015-04-17 | 2015-04-17 | 301 | Cuong (Cody) N. NGUYEN | 8h |
| 304 | 3.4.1.5 | Code for Web | 2015-04-20 | 2015-04-22 | 303 | Hoang (Hanley) T.T. NGUYEN | 24h |
| 305 | 3.4.1.6 | Code for WP | 2015-04-20 | 2015-04-22 | 303 | Trung (Truman) Q. NGUYEN | 24h |
| 306 | 3.4.1.7 | Code for Android | 2015-04-20 | 2015-04-22 | 303 | Cuong (Cody) N. NGUYEN | 24h |
| 307 | 3.4.1.8 | Self code review & Fix bugs | 2015-04-23 | 2015-04-23 | 306 | Cuong (Cody) N. NGUYEN | 8h |
| 308 | 3.4.1.9 | Peer code review & Fix bugs | 2015-04-23 | 2015-04-23 | 306 | Cuong (Cody) N. NGUYEN | 8h |
| 309 | 3.4.1.10 | Update UT case document | 2015-04-24 | 2015-04-24 | 308 | Cuong (Cody) N. NGUYEN | 8h |
| 310 | 3.4.1.11 | Prepare UT scripts | 2015-04-27 | 2015-04-27 | 309 | Cuong (Cody) N. NGUYEN | 8h |
| 311 | 3.4.1.12 | Perform UT & Fix bugs | 2015-04-28 | 2015-04-28 | 310 | Cuong (Cody) N. NGUYEN | 8h |

| ID | WBS | Task | Start | Finish | Predecessors | Resources | Work |
| --- | --- | --- | --- | --- | --- | --- | --- |
| 312 | 3.4.2 | **Comment** | 2015-04-15 | 2015-04-28 |  |  | 144h |
| 313 | 3.4.2.1 | Study requirement | 2015-04-15 | 2015-04-15 |  | Huy (Harold) Q. BUI | 8h |
| 314 | 3.4.2.2 | Prepare GUI prototypes | 2015-04-16 | 2015-04-16 | 313 | Huy (Harold) Q. BUI | 8h |
| 315 | 3.4.2.3 | Study design & prepare pseudo codes | 2015-04-17 | 2015-04-17 | 314 | Huy (Harold) Q. BUI | 8h |
| 316 | 3.4.2.4 | Prepare UT case document | 2015-04-17 | 2015-04-17 | 314 | Huy (Harold) Q. BUI | 8h |
| 317 | 3.4.2.5 | Code for Web | 2015-04-20 | 2015-04-22 | 316 | Hoang (Hanley) T.T. NGUYEN | 24h |
| 318 | 3.4.2.6 | Code for WP | 2015-04-20 | 2015-04-22 | 316 | Trung (Truman) Q. NGUYEN | 24h |
| 319 | 3.4.2.7 | Code for Android | 2015-04-20 | 2015-04-22 | 316 | Huy (Harold) Q. BUI | 24h |
| 320 | 3.4.2.8 | Self code review & Fix bugs | 2015-04-23 | 2015-04-23 | 319 | Huy (Harold) Q. BUI | 8h |
| 321 | 3.4.2.9 | Peer code review & Fix bugs | 2015-04-23 | 2015-04-23 | 319 | Huy (Harold) Q. BUI | 8h |
| 322 | 3.4.2.10 | Update UT case document | 2015-04-24 | 2015-04-24 | 321 | Huy (Harold) Q. BUI | 8h |
| 323 | 3.4.2.11 | Prepare UT scripts | 2015-04-27 | 2015-04-27 | 322 | Huy (Harold) Q. BUI | 8h |
| 324 | 3.4.2.12 | Perform UT & Fix bugs | 2015-04-28 | 2015-04-28 | 323 | Huy (Harold) Q. BUI | 8h |
| 325 | 3.4.3 | **Analyze Statistically** | 2015-04-15 | 2015-05-04 |  |  | 240h |
| 326 | 3.4.3.1 | Study requirement | 2015-04-15 | 2015-04-15 |  | Hoang (Hanley) T.T. NGUYEN | 8h |
| 327 | 3.4.3.2 | Prepare GUI prototypes | 2015-04-16 | 2015-04-16 | 326 | Hoang (Hanley) T.T. NGUYEN | 8h |
| 328 | 3.4.3.3 | Study design & prepare pseudo codes | 2015-04-17 | 2015-04-17 | 327 | Hoang (Hanley) T.T. NGUYEN | 8h |
| 329 | 3.4.3.4 | Prepare UT case document | 2015-04-17 | 2015-04-17 | 327 | Hoang (Hanley) T.T. NGUYEN | 8h |
| 330 | 3.4.3.5 | Code for Web | 2015-04-20 | 2015-04-28 | 329 | Hoang (Hanley) T.T. NGUYEN | 56h |
| 331 | 3.4.3.6 | Code for WP | 2015-04-20 | 2015-04-28 | 329 | Trung (Truman) Q. NGUYEN | 56h |
| 332 | 3.4.3.7 | Code for Android | 2015-04-20 | 2015-04-28 | 329 | Cuong (Cody) N. NGUYEN | 56h |
| 333 | 3.4.3.8 | Self code review & Fix bugs | 2015-04-29 | 2015-04-29 | 332 | Hoang (Hanley) T.T. NGUYEN | 8h |
| 334 | 3.4.3.9 | Peer code review & Fix bugs | 2015-04-29 | 2015-04-29 | 332 | Hoang (Hanley) T.T. NGUYEN | 8h |
| 335 | 3.4.3.10 | Update UT case document | 2015-04-30 | 2015-04-30 | 334 | Hoang (Hanley) T.T. NGUYEN | 8h |
| 336 | 3.4.3.11 | Prepare UT scripts | 2015-05-01 | 2015-05-01 | 335 | Hoang (Hanley) T.T. NGUYEN | 8h |
| 337 | 3.4.3.12 | Perform UT & Fix bugs | 2015-05-04 | 2015-05-04 | 336 | Hoang (Hanley) T.T. NGUYEN | 8h |

| ID | WBS | Task | Start | Finish | Predecessors | Resources | Work |
| --- | --- | --- | --- | --- | --- | --- | --- |
| 338 | 3.4.4 | **Payment** | 2015-04-15 | 2015-05-07 |  |  | 312h |
| 339 | 3.4.4.1 | Study requirement | 2015-04-15 | 2015-04-15 |  | Huy (Harold) Q. BUI | 8h |
| 340 | 3.4.4.2 | Prepare GUI prototypes | 2015-04-16 | 2015-04-16 | 339 | Huy (Harold) Q. BUI | 8h |
| 341 | 3.4.4.3 | Study design & prepare pseudo codes | 2015-04-17 | 2015-04-17 | 340 | Huy (Harold) Q. BUI | 8h |
| 342 | 3.4.4.4 | Prepare UT case document | 2015-04-17 | 2015-04-17 | 340 | Huy (Harold) Q. BUI | 8h |
| 343 | 3.4.4.5 | Code for Web | 2015-04-20 | 2015-05-01 | 342 | Hoang (Hanley) T.T. NGUYEN | 80h |
| 344 | 3.4.4.6 | Code for WP | 2015-04-20 | 2015-05-01 | 342 | Trung (Truman) Q. NGUYEN | 80h |
| 345 | 3.4.4.7 | Code for Android | 2015-04-20 | 2015-05-01 | 342 | Huy (Harold) Q. BUI | 80h |
| 346 | 3.4.4.8 | Self code review & Fix bugs | 2015-05-04 | 2015-05-04 | 345 | Huy (Harold) Q. BUI | 8h |
| 347 | 3.4.4.9 | Peer code review & Fix bugs | 2015-05-04 | 2015-05-04 | 345 | Huy (Harold) Q. BUI | 8h |
| 348 | 3.4.4.10 | Update UT case document | 2015-05-05 | 2015-05-05 | 347 | Huy (Harold) Q. BUI | 8h |
| 349 | 3.4.4.11 | Prepare UT scripts | 2015-05-06 | 2015-05-06 | 348 | Huy (Harold) Q. BUI | 8h |
| 350 | 3.4.4.12 | Perform UT & Fix bugs | 2015-05-07 | 2015-05-07 | 349 | Huy (Harold) Q. BUI | 8h |
| 351 | 3.4.5 | **Tracking GPS** | 2015-04-15 | 2015-05-04 |  |  | 240h |
| 352 | 3.4.5.1 | Study requirement | 2015-04-15 | 2015-04-15 |  | Cuong (Cody) N. NGUYEN | 8h |
| 353 | 3.4.5.2 | Prepare GUI prototypes | 2015-04-16 | 2015-04-16 | 352 | Cuong (Cody) N. NGUYEN | 8h |
| 354 | 3.4.5.3 | Study design & prepare pseudo codes | 2015-04-17 | 2015-04-17 | 353 | Cuong (Cody) N. NGUYEN | 8h |
| 355 | 3.4.5.4 | Prepare UT case document | 2015-04-17 | 2015-04-17 | 353 | Cuong (Cody) N. NGUYEN | 8h |
| 356 | 3.4.5.5 | Code for Web | 2015-04-20 | 2015-04-28 | 355 | Hoang (Hanley) T.T. NGUYEN | 56h |
| 357 | 3.4.5.6 | Code for Android | 2015-04-20 | 2015-04-28 | 355 | Cuong (Cody) N. NGUYEN | 56h |
| 358 | 3.4.5.7 | Code for WP | 2015-04-20 | 2015-04-28 | 355 | Trung (Truman) Q. NGUYEN | 56h |
| 359 | 3.4.5.8 | Self code review & Fix bugs | 2015-04-29 | 2015-04-29 | 358 | Cuong (Cody) N. NGUYEN | 8h |
| 360 | 3.4.5.9 | Peer code review & Fix bugs | 2015-04-29 | 2015-04-29 | 358 | Cuong (Cody) N. NGUYEN | 8h |
| 361 | 3.4.5.10 | Update UT case document | 2015-04-30 | 2015-04-30 | 360 | Cuong (Cody) N. NGUYEN | 8h |
| 362 | 3.4.5.11 | Prepare UT scripts | 2015-05-01 | 2015-05-01 | 361 | Cuong (Cody) N. NGUYEN | 8h |
| 363 | 3.4.5.12 | Perform UT & Fix bugs | 2015-05-04 | 2015-05-04 | 362 | Cuong (Cody) N. NGUYEN | 8h |

| ID | WBS | Task | Start | Finish | Predecessors | Resources | Work |
| --- | --- | --- | --- | --- | --- | --- | --- |
| 364 | 3.4.6 | **View other User Profile** | 2015-04-15 | 2015-04-27 |  |  | 136h |
| 365 | 3.4.6.1 | Study requirement | 2015-04-15 | 2015-04-15 |  | Trung (Truman) Q. NGUYEN | 8h |
| 366 | 3.4.6.2 | Study design & prepare pseudo codes | 2015-04-16 | 2015-04-16 | 365 | Trung (Truman) Q. NGUYEN | 8h |
| 367 | 3.4.6.3 | Prepare UT case document | 2015-04-16 | 2015-04-16 | 365 | Trung (Truman) Q. NGUYEN | 8h |
| 368 | 3.4.6.4 | Code for Web | 2015-04-17 | 2015-04-21 | 367 | Hoang (Hanley) T.T. NGUYEN | 24h |
| 369 | 3.4.6.5 | Code for Android | 2015-04-17 | 2015-04-21 | 367 | Huy (Harold) Q. BUI | 24h |
| 370 | 3.4.6.6 | Code for WP | 2015-04-17 | 2015-04-21 | 367 | Trung (Truman) Q. NGUYEN | 24h |
| 371 | 3.4.6.7 | Self code review & Fix bugs | 2015-04-22 | 2015-04-22 | 370 | Trung (Truman) Q. NGUYEN | 8h |
| 372 | 3.4.6.8 | Peer code review & Fix bugs | 2015-04-22 | 2015-04-22 | 370 | Trung (Truman) Q. NGUYEN | 8h |
| 373 | 3.4.6.9 | Update UT case document | 2015-04-23 | 2015-04-23 | 372 | Trung (Truman) Q. NGUYEN | 8h |
| 374 | 3.4.6.10 | Prepare UT scripts | 2015-04-24 | 2015-04-24 | 373 | Trung (Truman) Q. NGUYEN | 8h |
| 375 | 3.4.6.11 | Perform UT & Fix bugs | 2015-04-27 | 2015-04-27 | 374 | Trung (Truman) Q. NGUYEN | 8h |
| 376 | 3.4.7 | **RESTFul for Statistic** | 2015-04-15 | 2015-05-01 |  | Thanh (Terry) D. TRAN | 120h |
| 377 | 3.4.7.1 | Study requirement | 2015-04-15 | 2015-04-15 |  |  | 8h |
| 378 | 3.4.7.2 | Study design & prepare pseudo codes | 2015-04-16 | 2015-04-16 | 377 |  | 8h |
| 379 | 3.4.7.3 | Prepare UT case document | 2015-04-16 | 2015-04-16 | 377 |  | 8h |
| 380 | 3.4.7.4 | Code | 2015-04-17 | 2015-04-27 | 379 |  | 56h |
| 381 | 3.4.7.5 | Self code review & Fix bugs | 2015-04-28 | 2015-04-28 | 380 |  | 8h |
| 382 | 3.4.7.6 | Peer code review & Fix bugs | 2015-04-28 | 2015-04-28 | 380 |  | 8h |
| 383 | 3.4.7.7 | Update UT case document | 2015-04-29 | 2015-04-29 | 382 |  | 8h |
| 384 | 3.4.7.8 | Prepare UT scripts | 2015-04-30 | 2015-04-30 | 383 |  | 8h |
| 385 | 3.4.7.9 | Perform UT & Fix bugs | 2015-05-01 | 2015-05-01 | 384 |  | 8h |
| 386 | 3.4.8 | **RESTFul for Payment** | 2015-04-15 | 2015-05-01 |  | Vi (Vidal) T. LE | 120h |
| 387 | 3.4.8.1 | Study requirement | 2015-04-15 | 2015-04-15 |  |  | 8h |
| 388 | 3.4.8.2 | Study design & prepare pseudo codes | 2015-04-16 | 2015-04-16 | 387 |  | 8h |
| 389 | 3.4.8.3 | Prepare UT case document | 2015-04-16 | 2015-04-16 | 387 |  | 8h |
| 390 | 3.4.8.4 | Code | 2015-04-17 | 2015-04-27 | 389 |  | 56h |
| 391 | 3.4.8.5 | Self code review & Fix bugs | 2015-04-28 | 2015-04-28 | 390 |  | 8h |
| 392 | 3.4.8.6 | Peer code review & Fix bugs | 2015-04-28 | 2015-04-28 | 390 |  | 8h |
| 393 | 3.4.8.7 | Update UT case document | 2015-04-29 | 2015-04-29 | 392 |  | 8h |
| 394 | 3.4.8.8 | Prepare UT scripts | 2015-04-30 | 2015-04-30 | 393 |  | 8h |
| 395 | 3.4.8.9 | Perform UT & Fix bugs | 2015-05-01 | 2015-05-01 | 394 |  | 8h |

| ID | WBS | Task | Duration | Start | Finish | Predecessors | Resources | Work |
| --- | --- | --- | --- | --- | --- | --- | --- | --- |
| 396 | 4 | **Termination** |  | 2015-05-08 | 2015-05-15 | 9 |  | 48h |
| 397 | 4.1 | Project Package, Evaluations | 5d | 2015-05-08 | 2015-05-14 |  | Vi (Vidal) T. LE [17%]; Cuong (Cody) N. NGUYEN [17%]; Huy (Harold) Q. BUI [17%]; Trung (Truman) Q. NGUYEN [17%]; Thanh (Terry) D. TRAN [17%]; Hoang (Hanley) T.T. NGUYEN [17%] | 40h |
| 398 | 4.2 | Post-mortem Meeting | 1d | 2015-05-15 | 2015-05-15 | 397 | Vi (Vidal) T. LE [17%]; Cuong (Cody) N. NGUYEN [17%]; Huy (Harold) Q. BUI [17%]; Trung (Truman) Q. NGUYEN [17%]; Thanh (Terry) D. TRAN [17%]; Hoang (Hanley) T.T. NGUYEN [17%] | 8h |
